# Developing Al-Mirath

Schedule from MS Project, 2017-12-19 to 2018-02-08, A marks actual dates.

## Calendars

- Standard: Mon-Fri 08:00-12:00, 13:00-17:00; Sat-Sun off.

## Resources

| Resource |
| --- |
| Management |
| Project Manager |
| Analyst |
| Developer |
| Testers |
| Trainers |
| Technical Communicators |
| Deployment Team |

## Schedule

| ID | WBS | Task | Duration | Start | Finish | Predecessors | Complete | Remaining | Total slack | Free slack | Resources | Work | Actual work |
| --- | --- | --- | --- | --- | --- | --- | --- | --- | --- | --- | --- | --- | --- |
| 1 | 1 | **Building Static App** | 8.75d | 2017-12-19 A | 2017-12-29 |  | 89% | 1d | 29.25d |  | Developer | 164h | 148h |
| 2 | 1.1 | Setup MVC Project | 2h | 2017-12-19 A | 2017-12-19 A |  | 100% |  |  |  | Developer | 2h | 2h |
| 3 | 1.2 | Design The Layout & Theme | 4h | 2017-12-19 A | 2017-12-19 A | 2 | 100% |  |  |  | Developer | 4h | 4h |
| 4 | 1.3 | Design The Pages | 3d | 2017-12-19 A | 2017-12-22 A | 3 | 100% |  |  |  | Developer | 24h | 24h |
| 5 | 1.4 | Inquire about the design of details and ayat pages | 1d | 2017-12-22 A | 2017-12-25 A | 4 | 100% |  |  |  | Developer | 8h | 8h |
| 6 | 1.5 | Call The Printer API | 1d | 2017-12-25 | 2017-12-26 | 5 |  |  | 22.25d | 0d | Developer | 8h |  |
| 7 | 1.6 | Review With Stakeholder | 3d | 2017-12-26 A | 2017-12-29 A | 6, 5 | 100% |  |  |  | Developer; Technical Communicators | 48h | 48h |
| 8 | 2 | **Moving Data Into Controllers** | 7d | 2017-12-29 A | 2018-01-09 |  | 14% | 6d | 22.25d |  | Developer | 104h | 16h |
| 9 | 2.1 | Ask for the needed Ayat | 1d | 2017-12-29 | 2018-01-01 | 7 |  |  | 27.25d | 0d | Analyst | 8h |  |
| 10 | 2.2 | Get Ayat from API | 1d | 2018-01-01 | 2018-01-02 | 9 |  |  | 27.25d |  | Analyst | 8h |  |
| 11 | 2.3 | Get Alwaratha from page | 1d | 2018-01-02 A | 2018-01-03 A | 10 | 100% |  |  |  | Project Manager | 8h | 8h |
| 12 | 2.4 | Use controller to show results | 1d | 2018-01-03 | 2018-01-04 | 11 |  |  | 22.25d | 0d | Project Manager; Analyst | 16h |  |
| 13 | 2.5 | Use controller to show details | 1d | 2018-01-04 | 2018-01-05 | 12 |  |  | 22.25d | 0d | Analyst | 8h |  |
| 14 | 2.6 | Test and verify | 2d | 2018-01-05 | 2018-01-09 | 13 |  |  | 22.25d |  |  |  |  |
| 15 | 3 | **Developing The Algorithms API** | 11d | 2017-12-19 | 2018-01-02 |  |  |  | 0d |  | Developer | 152h |  |
| 16 | 3.1 | Understand the rules | 1d | 2017-12-19 | 2017-12-19 |  |  |  | 0d |  | Developer | 8h |  |
| 17 | 3.2 | Design the algorithms | 2d | 2017-12-20 | 2017-12-21 | 16 |  |  | 0d |  | Developer | 16h |  |
| 18 | 3.3 | Develop the algorithms | 2d | 2017-12-22 | 2017-12-25 | 17 |  |  | 0d |  | Developer | 16h |  |
| 19 | 3.4 | Test algorithms with Postman | 1d | 2017-12-26 | 2017-12-26 | 18 |  |  | 0d |  | Developer | 8h |  |
| 20 | 3.5 | Call API from controller | 2d | 2017-12-27 | 2017-12-28 | 19 |  |  | 0d |  | Developer | 16h |  |
| 21 | 3.6 | Develop controller/API error trapping | 3d | 2017-12-29 | 2018-01-02 | 20 |  |  | 0d |  |  |  |  |
| 22 | 4 | **Result Printing** | 0d | 2017-12-19 | 2017-12-19 |  |  |  |  |  |  | 280h |  |
| 23 | 4.1 | Develop unit test plans using product specifications | 4d | 2017-12-19 | 2017-12-22 |  |  |  | 7d |  | Testers | 32h |  |
| 24 | 4.2 | Develop integration test plans using product specifications | 4d | 2017-12-19 | 2017-12-22 |  |  |  | 34d |  | Testers | 32h |  |

| ID | WBS | Task | Type | Duration | Start | Finish | Predecessors | Total slack | Free slack | Resources | Work |
| --- | --- | --- | --- | --- | --- | --- | --- | --- | --- | --- | --- |
| 25 | 4.3 | **Unit Testing** |  | 15d | 2018-01-03 | 2018-01-23 |  | 0d |  |  | 120h |
| 26 | 4.3.1 | Review modular code |  | 5d | 2018-01-03 | 2018-01-09 | 23, 21 | 0d |  | Testers | 40h |
| 27 | 4.3.2 | Test component modules to product specifications |  | 2d | 2018-01-10 | 2018-01-11 | 21, 26 | 0d |  | Testers | 16h |
| 28 | 4.3.3 | Identify anomalies to product specifications |  | 3d | 2018-01-12 | 2018-01-16 | 27 | 0d |  | Testers | 24h |
| 29 | 4.3.4 | Modify code |  | 3d | 2018-01-17 | 2018-01-19 | 28 | 0d |  | Testers | 24h |
| 30 | 4.3.5 | Re-test modified code |  | 2d | 2018-01-22 | 2018-01-23 | 29 | 0d |  | Testers | 16h |
| 31 | 4.3.6 | Unit testing complete | milestone | 0d | 2018-01-23 | 2018-01-23 | 30 | 0d |  |  |  |
| 32 | 4.4 | **Integration Testing** |  | 12d | 2018-01-24 | 2018-02-08 |  | 0d |  |  | 96h |
| 33 | 4.4.1 | Test module integration |  | 5d | 2018-01-24 | 2018-01-30 | 31 | 0d |  | Testers | 40h |
| 34 | 4.4.2 | Identify anomalies to specifications |  | 2d | 2018-01-31 | 2018-02-01 | 33 | 0d |  | Testers | 16h |
| 35 | 4.4.3 | Modify code |  | 3d | 2018-02-02 | 2018-02-06 | 34 | 0d |  | Testers | 24h |
| 36 | 4.4.4 | Re-test modified code |  | 2d | 2018-02-07 | 2018-02-08 | 35 | 0d |  | Testers | 16h |
| 37 | 4.4.5 | Integration testing complete | milestone | 0d | 2018-02-08 | 2018-02-08 | 36 | 0d |  |  |  |
| 38 | 5 | **Details Printing** |  | 0d | 2017-12-19 | 2017-12-19 |  |  |  |  | 256h |
| 39 | 5.1 | Develop training specifications for end users |  | 3d | 2017-12-19 | 2017-12-21 |  | 11d | 8d | Trainers | 24h |
| 40 | 5.2 | Develop training specifications for helpdesk support staff |  | 3d | 2017-12-19 | 2017-12-21 |  | 11d | 8d | Trainers | 24h |
| 41 | 5.3 | Identify training delivery methodology (computer based training, classroom, etc.) |  | 2d | 2017-12-19 | 2017-12-20 |  | 12d | 9d | Trainers | 16h |
| 42 | 5.4 | Develop training materials |  | 3w | 2018-01-03 | 2018-01-23 | 39, 21, 40, 41 | 3d | 0d | Trainers | 120h |
| 43 | 5.5 | Conduct training usability study |  | 4d | 2018-01-24 | 2018-01-29 | 42 | 3d | 0d | Trainers | 32h |
| 44 | 5.6 | Finalize training materials |  | 3d | 2018-01-30 | 2018-02-01 | 43 | 3d | 0d | Trainers | 24h |
| 45 | 5.7 | Develop training delivery mechanism |  | 2d | 2018-02-02 | 2018-02-05 | 44 | 3d | 0d | Trainers | 16h |
| 46 | 5.8 | Training materials complete | milestone | 0d | 2018-02-05 | 2018-02-05 | 45 | 3d |  |  |  |
| 47 | 6 | **Testing** |  | 0d | 2017-12-19 | 2017-12-19 |  |  |  |  | 336h |
| 48 | 6.1 | Develop Help specification |  | 1d | 2017-12-19 | 2017-12-19 |  | 17d | 4.5d | Technical Communicators | 8h |
| 49 | 6.2 | Develop Help system |  | 3w | 2017-12-26 | 2018-01-16 | 48, 19FS-5% | 12.5d | 0d | Technical Communicators | 120h |
| 50 | 6.3 | Review Help documentation |  | 3d | 2018-01-16 | 2018-01-19 | 49 | 12.5d | 0d | Technical Communicators | 24h |
| 51 | 6.4 | Incorporate Help documentation feedback |  | 2d | 2018-01-19 | 2018-01-23 | 50 | 12.5d | 0d | Technical Communicators | 16h |
| 52 | 6.5 | Develop user manuals specifications |  | 2d | 2017-12-19 | 2017-12-20 |  | 17d | 3.5d | Technical Communicators | 16h |
| 53 | 6.6 | Develop user manuals |  | 3w | 2017-12-26 | 2018-01-16 | 52, 19FS-5% | 13.5d | 0d | Technical Communicators | 120h |
| 54 | 6.7 | Review all user documentation |  | 2d | 2018-01-16 | 2018-01-18 | 53 | 13.5d | 0d | Technical Communicators | 16h |
| 55 | 6.8 | Incorporate user documentation feedback |  | 2d | 2018-01-18 | 2018-01-22 | 54 | 13.5d | 1d | Technical Communicators | 16h |
| 56 | 6.9 | Documentation complete | milestone | 0d | 2018-01-23 | 2018-01-23 | 55, 51 | 12.5d |  |  |  |

| ID | WBS | Task | Type | Duration | Start | Finish | Predecessors | Total slack | Free slack | Resources | Work |
| --- | --- | --- | --- | --- | --- | --- | --- | --- | --- | --- | --- |
| 57 | 7 | **Deployment** |  | 1d | 2017-12-19 | 2017-12-19 |  |  |  |  | 40h |
| 58 | 7.1 | Determine final deployment strategy |  | 1d | 2017-12-19 | 2017-12-19 |  | 30d | 0d | Deployment Team | 8h |
| 59 | 7.2 | Develop deployment methodology |  | 1d | 2017-12-20 | 2017-12-20 | 58 | 30d | 0d | Deployment Team | 8h |
| 60 | 7.3 | Secure deployment resources |  | 1d | 2017-12-21 | 2017-12-21 | 59 | 30d | 0d | Deployment Team | 8h |
| 61 | 7.4 | Train support staff |  | 1d | 2017-12-22 | 2017-12-22 | 60 | 30d | 0d | Deployment Team | 8h |
| 62 | 7.5 | Deploy software |  | 1d | 2017-12-25 | 2017-12-25 | 61 | 30d | 0d | Deployment Team | 8h |
| 63 | 7.6 | Deployment complete | milestone | 0d | 2017-12-25 | 2017-12-25 | 62 | 30d | 0d |  |  |
| 64 | 8 | **Post Implementation Review** |  | 1d | 2017-12-26 | 2017-12-26 |  |  |  |  | 24h |
| 65 | 8.1 | Document lessons learned |  | 1d | 2017-12-26 | 2017-12-26 | 63 | 30d | 0d | Project Manager | 8h |
| 66 | 8.2 | Distribute to team members |  | 1d | 2017-12-27 | 2017-12-27 | 65 | 30d | 0d | Project Manager | 8h |
| 67 | 8.3 | Create software maintenance team |  | 1d | 2017-12-28 | 2017-12-28 | 66 | 30d | 0d | Project Manager | 8h |
| 68 | 8.4 | Post implementation review complete | milestone | 0d | 2017-12-28 | 2017-12-28 | 67 | 30d |  |  |  |
